Schedule from MS Project, 2022-10-06 to 2023-01-19, costs in R$.

## Calendars

- Padrão: Mon-Fri 09:00-12:00, 13:00-18:00; Sat-Sun off.

## Resources

| Resource | Group | Rate |
| --- | --- | --- |
| Analista de sistemas | Analista de Sistemas | 22.1 |
| Gerente de Projetos | Gerente de Projetos | 29.5 |
| 1 | Desenvolvedor | 15.3 |
| 2 | Desenvolvedor | 15.3 |
| 3 | Desenvolvedora | 15.3 |
| 4 | Desenvolvedora | 15.3 |
| Testadora | Testadora | 11.2 |

## Schedule

| ID | WBS | Task | Duration | Start | Finish | Predecessors | Total slack | Free slack | Resources | Work | Cost |
| --- | --- | --- | --- | --- | --- | --- | --- | --- | --- | --- | --- |
| 1 | 1 | **UNIVERSIDADE** | 76d | 2022-10-06 | 2023-01-19 |  | 0d |  |  | 680h | 12,479.2 |
| 2 | 1.1 | **Prospecção** | 8d | 2022-10-06 | 2022-10-17 |  | 0d |  |  | 64h | 1,769.6 |
| 3 | 1.1.1 | Levantar o escopo | 2d | 2022-10-06 | 2022-10-07 |  | 0d |  | Gerente de Projetos | 16h | 472 |
| 4 | 1.1.2 | Criar estimativa inicial do projeto | 2d | 2022-10-10 | 2022-10-11 | 3 | 0d |  | Gerente de Projetos | 16h | 472 |
| 5 | 1.1.3 | Gerar orçamento preliminar | 2d | 2022-10-12 | 2022-10-13 | 4 | 0d |  | Analista de sistemas | 16h | 353.6 |
| 6 | 1.1.4 | Obter assinatura de contrato | 2d | 2022-10-14 | 2022-10-17 | 5 | 0d |  | Gerente de Projetos | 16h | 472 |
| 7 | 1.2 | **Planejamento** | 15d | 2022-10-18 | 2022-11-07 | 2 | 0d |  |  | 192h | 4,222.4 |
| 8 | 1.2.1 | Plano para o projeto | 3d | 2022-10-18 | 2022-10-20 |  | 0d |  | Gerente de Projetos | 24h | 708 |
| 9 | 1.2.2 | Identificar os riscos | 3d | 2022-10-21 | 2022-10-25 | 8 | 3d | 0d | Analista de sistemas | 24h | 530.4 |
| 10 | 1.2.3 | Preparar documento dos requisitos | 4d | 2022-10-26 | 2022-10-31 | 9 | 3d | 0d | Analista de sistemas | 32h | 707.2 |
| 11 | 1.2.4 | Detalhar as estimativas | 2d | 2022-11-01 | 2022-11-02 | 10 | 3d |  | Analista de sistemas | 16h | 353.6 |
| 12 | 1.2.5 | Criar o cronograma | 2d | 2022-10-21 | 2022-10-24 | 8 | 0d |  | Gerente de Projetos | 16h | 472 |
| 13 | 1.2.6 | Obter assinatura do cliente | 2d | 2022-10-25 | 2022-10-26 | 12 | 0d |  | Gerente de Projetos | 16h | 472 |
| 14 | 1.2.7 | Fazer os diagramas de UML | 8d | 2022-10-27 | 2022-11-07 | 13 | 0d |  | 1 | 64h | 979.2 |
| 15 | 1.3 | **Execução** | 46d | 2022-11-08 | 2023-01-10 | 7 | 0d |  |  | 424h | 6,487.2 |
| 16 | 1.3.1 | **Banco de dados** | 26d | 2022-11-08 | 2022-12-13 |  | 0d |  |  | 424h | 6,487.2 |
| 17 | 1.3.1.1 | Criar o script do banco de dados | 5d | 2022-11-08 | 2022-11-14 |  | 0d |  | 2 | 40h | 612 |
| 19 | 1.3.1.2 | 001 – Cria Cadastro de Alunos | 5d | 2022-11-15 | 2022-11-21 | 17 | 4d | 0d | 3 | 40h | 612 |
| 20 | 1.3.1.3 | 002 – Criar Cadastro de Cursos | 4d | 2022-11-15 | 2022-11-18 | 17 | 0d |  | 4 | 32h | 489.6 |
| 21 | 1.3.1.4 | 003 – Criar Cadastro de Disciplinas | 4d | 2022-11-21 | 2022-11-24 | 20 | 0d |  | 4 | 32h | 489.6 |
| 22 | 1.3.1.5 | 004 – Criar Cadastro de Salas de Aulas | 3d | 2022-11-15 | 2022-11-17 | 17 | 14d | 0d | 2 | 24h | 367.2 |
| 23 | 1.3.1.6 | 005 – Criar Cadastro de Professores | 4d | 2022-11-25 | 2022-11-30 | 21 | 0d |  | 3 | 32h | 489.6 |
| 24 | 1.3.1.7 | 006 – Criar Cadastro de Notas | 4d | 2022-11-25 | 2022-11-30 | 19, 21 | 1d | 0d | 4 | 32h | 489.6 |
| 25 | 1.3.1.8 | 007 – Criar Cadastro de Faltas | 4d | 2022-11-22 | 2022-11-25 | 19 | 4d | 0d | 1 | 32h | 489.6 |
| 26 | 1.3.1.9 | 008 – Criar Relatório de Alunos | 4d | 2022-11-22 | 2022-11-25 | 19 | 7d | 0d | 3 | 32h | 489.6 |
| 27 | 1.3.1.10 | 009 – Criar Relatório de Cursos | 4d | 2022-11-21 | 2022-11-24 | 20 | 8d | 1d | 1 | 32h | 489.6 |
| 28 | 1.3.1.11 | 010 – Criar Relatório de Disciplinas | 4d | 2022-11-25 | 2022-11-30 | 21 | 4d | 0d | 2 | 32h | 489.6 |
| 29 | 1.3.1.12 | 011 – Criar Relatório de Salas de Aulas | 4d | 2022-11-18 | 2022-11-23 | 22 | 14d |  | 2 | 32h | 489.6 |
| 30 | 1.3.1.13 | 012 - Criar Relatório de Professores | 4d | 2022-12-01 | 2022-12-06 | 23 | 0d |  |  |  |  |
| 31 | 1.3.1.14 | 013 – Criar Relatório de Notas | 4d | 2022-12-01 | 2022-12-06 | 24 | 1d | 0d |  |  |  |
| 32 | 1.3.1.15 | 014 – Criar Relatório de Faltas | 4d | 2022-11-28 | 2022-12-01 | 25 | 4d | 3d |  |  |  |
| 33 | 1.3.1.16 | 015 – Criar Relatório de Alunos Aprovados | 4d | 2022-12-07 | 2022-12-12 | 26, 31, 32 | 1d |  |  |  |  |
| 34 | 1.3.1.17 | 016 – Criar Relatório de Professores por Curso | 5d | 2022-12-07 | 2022-12-13 | 27, 30 | 0d |  |  |  |  |
| 35 | 1.3.1.18 | 017 – Criar Relatório de Alunos por Disciplina | 5d | 2022-12-01 | 2022-12-07 | 26, 28 | 4d |  |  |  |  |
| 36 | 1.3.1.19 | 018 – Criar Relatório de Alunos por Curso | 4d | 2022-11-28 | 2022-12-01 | 26, 27 | 8d |  | 3 | 32h | 489.6 |
| 37 | 1.3.2 | Testar a aplicação | 10d | 2022-12-14 | 2022-12-27 | 16 | 0d |  |  |  |  |
| 38 | 1.3.3 | Gerar a instalação | 2d | 2022-12-28 | 2022-12-29 | 37 | 0d |  |  |  |  |
| 39 | 1.3.4 | Fazer o plano de implantação | 2d | 2022-12-30 | 2023-01-02 | 38 | 0d |  |  |  |  |
| 40 | 1.3.5 | Instalar o sistema | 4d | 2023-01-03 | 2023-01-06 | 39 | 0d |  |  |  |  |
| 41 | 1.3.6 | Obter a aceitação do cliente | 2d | 2023-01-09 | 2023-01-10 | 40 | 0d |  |  |  |  |

| ID | WBS | Task | Duration | Start | Finish | Predecessors | Total slack |
| --- | --- | --- | --- | --- | --- | --- | --- |
| 42 | 1.4 | **Monitoramento e Controle** | 5d | 2023-01-11 | 2023-01-17 | 15 | 0d |
| 43 | 1.4.1 | Acompanhar os riscos do projeto | 5d | 2023-01-11 | 2023-01-17 |  | 0d |
| 44 | 1.4.2 | Acompanhar os requisitos do projeto | 4d | 2023-01-11 | 2023-01-16 |  | 1d |
| 45 | 1.4.3 | Atualizar medidas | 3d | 2023-01-11 | 2023-01-13 |  | 2d |
| 46 | 1.4.4 | Executar ações corretivas | 3d | 2023-01-11 | 2023-01-13 |  | 2d |
| 47 | 1.5 | **Fechamento** | 2d | 2023-01-18 | 2023-01-19 | 42 | 0d |
| 48 | 1.5.1 | Documento de fechamento do projeto | 2d | 2023-01-18 | 2023-01-19 |  | 0d |
| 49 | 1.5.2 | Registramos lições aprendidas | 2d | 2023-01-18 | 2023-01-19 |  | 0d |
